Schedule from MS Project, 2014-03-10 to 2014-06-13, costs in $, A marks actual dates.

## Calendars

- Standard: Mon-Fri 08:00-12:00, 13:00-17:00; Sat-Sun off.

## Resources

| Resource | Rate |
| --- | --- |
| Lidija Lastavec | 50 |
| Nikola Maras | 50 |

## Schedule

| ID | WBS | Task | Type | Duration | Start | Finish | Predecessors | Complete | Baseline start | Baseline finish | Baseline duration | Resources | Work | Actual work | Cost | Baseline cost | Actual cost |
| --- | --- | --- | --- | --- | --- | --- | --- | --- | --- | --- | --- | --- | --- | --- | --- | --- | --- |
| 1 | 1 | **I faza - analiza i planiranje projekta** |  | 15d | 2014-03-10 A | 2014-03-28 A |  | 100% | 2014-03-10 | 2014-03-28 | 15d |  | 200h | 200h | 10,000 | 10,000 | 10,000 |
| 2 | 1.1 | Analiza poslovnog sustava | manual | 5d | 2014-03-10 A | 2014-03-14 A |  | 100% | 2014-03-10 | 2014-03-14 | 5d | Lidija Lastavec | 40h | 40h | 2,000 | 2,000 | 2,000 |
| 3 | 1.2 | Izrada projektnog plana | manual | 5d | 2014-03-17 A | 2014-03-21 A | 2 | 100% | 2014-03-17 | 2014-03-21 | 5d | Lidija Lastavec | 40h | 40h | 2,000 | 2,000 | 2,000 |
| 4 | 1.3 | Određivanje potrebnih razvojnih alata | manual | 5d | 2014-03-17 A | 2014-03-21 A |  | 100% | 2014-03-17 | 2014-03-21 | 5d | Nikola Maras | 40h | 40h | 2,000 | 2,000 | 2,000 |
| 5 | 1.4 | Pisanje dolumentacije | manual | 2d | 2014-03-24 A | 2014-03-25 A | 3 | 100% | 2014-03-24 | 2014-03-28 | 5d | Lidija Lastavec | 16h | 16h | 800 | 2,000 | 800 |
| 6 | 1.5 | Specifikacija razvojne, testne i produkcijske okoline | manual | 5d | 2014-03-24 A | 2014-03-28 A | 4 | 100% | 2014-03-24 | 2014-03-28 | 5d | Nikola Maras | 40h | 40h | 2,000 | 2,000 | 2,000 |
| 7 | 1.6 | Specifikacija zahtjeva | manual | 3d | 2014-03-26 A | 2014-03-28 A |  | 100% | 2014-04-07 | 2014-04-07 | 1d | Lidija Lastavec | 24h | 24h | 1,200 | 400 | 1,200 |
| 8 | 2 | **II faza - izrada modela** |  | 5d | 2014-03-31 | 2014-04-04 | 1 |  | 2014-03-31 | 2014-04-04 | 5d |  | 80h |  | 4,000 | 4,000 |  |
| 9 | 2.1 | Izrada modela podataka | manual | 1d | 2014-03-31 | 2014-03-31 |  |  | 2014-03-31 | 2014-03-31 | 1d | Lidija Lastavec | 8h |  | 400 | 400 |  |
| 10 | 2.2 | Izrada modela procesa | manual | 2d | 2014-04-01 | 2014-04-02 | 9 |  | 2014-04-01 | 2014-04-02 | 2d | Lidija Lastavec | 16h |  | 800 | 800 |  |
| 11 | 2.3 | Izrada modela aktivnosti | manual | 2d | 2014-04-03 | 2014-04-04 | 10 |  | 2014-04-03 | 2014-04-04 | 2d | Lidija Lastavec | 16h |  | 800 | 800 |  |
| 12 | 2.4 | Implementacija razvojne okoline | manual | 5d | 2014-03-31 | 2014-04-04 | 6 |  | 2014-03-31 | 2014-04-04 | 5d | Nikola Maras | 40h |  | 2,000 | 2,000 |  |
| 13 | 3 | **III faza - razvoj VIES registra** |  | 10d | 2014-04-07 | 2014-04-18 | 8 |  | 2014-04-07 | 2014-04-18 | 10d |  | 104h |  | 5,200 | 5,600 |  |
| 14 | 3.1 | Use case _faza III | manual | 1d | 2014-04-08 | 2014-04-08 |  |  | 2014-04-08 | 2014-04-08 | 1d | Lidija Lastavec | 8h |  | 400 | 400 |  |
| 15 | 3.2 | Implementacija šifarnika | manual | 2d | 2014-04-07 | 2014-04-08 |  |  | 2014-04-07 | 2014-04-08 | 2d | Nikola Maras | 16h |  | 800 | 800 |  |
| 16 | 3.3 | Implementacija VIES registra | manual | 3d | 2014-04-09 | 2014-04-11 | 15 |  | 2014-04-09 | 2014-04-11 | 3d | Nikola Maras | 24h |  | 1,200 | 1,200 |  |
| 17 | 3.4 | Funkcionalnost ažuriranja i pregleda VIES registra | manual | 3d | 2014-04-14 | 2014-04-16 | 16 |  | 2014-04-14 | 2014-04-16 | 3d | Lidija Lastavec | 24h |  | 1,200 | 1,200 |  |
| 18 | 3.5 | Testiranje testnim podacima | manual | 1d | 2014-04-17 | 2014-04-17 | 17 |  | 2014-04-17 | 2014-04-17 | 1d | Lidija Lastavec | 8h |  | 400 | 400 |  |
| 19 | 3.6 | Inicijalno punjenje registra | manual | 2d | 2014-04-17 | 2014-04-18 |  |  | 2014-04-17 | 2014-04-18 | 2d | Nikola Maras | 16h |  | 800 | 800 |  |
| 20 | 3.7 | Zapisnik o testiranju faze III | manual | 1d | 2014-04-18 | 2014-04-18 |  |  | 2014-04-18 | 2014-04-18 | 1d | Lidija Lastavec | 8h |  | 400 | 400 |  |
| 21 | 4 | **IV. faza-razvoj registra poreznih podataka RH** |  | 20d | 2014-04-21 | 2014-05-16 | 13 |  | 2014-04-21 | 2014-05-16 | 20d |  | 280h |  | 14,000 | 14,000 |  |
| 22 | 4.1 | Use case _faza IV | manual | 2d | 2014-04-21 | 2014-04-22 |  |  | 2014-04-22 | 2014-04-22 | 1d | Lidija Lastavec | 16h |  | 800 | 400 |  |
| 23 | 4.2 | Implementacija šifarnikaza fazu IV | manual | 2d | 2014-04-22 | 2014-04-23 |  |  | 2014-04-22 | 2014-04-23 | 2d | Nikola Maras | 16h |  | 800 | 800 |  |
| 24 | 4.3 | Implementacija PDV registra | manual | 3d | 2014-04-24 | 2014-04-28 | 23 |  | 2014-04-24 | 2014-04-28 | 3d | Nikola Maras | 24h |  | 1,200 | 1,200 |  |
| 25 | 4.4 | Implementacija PDV-S registra | manual | 3d | 2014-04-29 | 2014-05-01 | 23 |  | 2014-04-29 | 2014-05-01 | 3d | Nikola Maras | 24h |  | 1,200 | 1,200 |  |
| 26 | 4.5 | Implementacija ZP registra | manual | 3d | 2014-05-02 | 2014-05-06 | 23 |  | 2014-05-02 | 2014-05-06 | 3d | Nikola Maras | 24h |  | 1,200 | 1,200 |  |
| 27 | 4.6 | Testiranje testnim podacima | manual | 6d | 2014-04-29 | 2014-05-06 |  |  | 2014-04-29 | 2014-05-06 | 6d | Lidija Lastavec | 48h |  | 2,400 | 2,400 |  |
| 28 | 4.7 | Zapisnik o testiranju registara | manual | 1d | 2014-05-07 | 2014-05-07 | 27 |  | 2014-05-07 | 2014-05-07 | 1d | Lidija Lastavec | 8h |  | 400 | 400 |  |
| 29 | 4.8 | Inicijalno punjenje svih registara | manual | 1d | 2014-05-07 | 2014-05-07 |  |  | 2014-05-07 | 2014-05-07 | 1d | Nikola Maras | 8h |  | 400 | 400 |  |
| 30 | 4.9 | Implementacija funkcionalnosti obrade poreznih podataka - uparivanje | manual | 3d | 2014-05-08 | 2014-05-12 | 29 |  | 2014-05-08 | 2014-05-12 | 3d | Nikola Maras | 24h |  | 1,200 | 1,200 |  |
| 31 | 4.10 | Implementacija funkcionalnosti kontrole poreznih podataka | manual | 4d | 2014-05-13 | 2014-05-16 | 30 |  | 2014-05-13 | 2014-05-16 | 4d | Nikola Maras | 32h |  | 1,600 | 1,600 |  |
| 32 | 4.11 | Implementacija funkcionalnosti pregleda rezultata kontrola | manual | 3d | 2014-05-08 | 2014-05-12 |  |  | 2014-05-08 | 2014-05-12 | 3d | Lidija Lastavec | 24h |  | 1,200 | 1,200 |  |
| 33 | 4.12 | Testiranje testnim podacima | manual | 3d | 2014-05-13 | 2014-05-15 | 32 |  | 2014-05-13 | 2014-05-15 | 3d | Lidija Lastavec | 24h |  | 1,200 | 1,200 |  |
| 34 | 4.13 | Zapisnik o testiranju registara | manual | 1d | 2014-05-16 | 2014-05-16 | 33 |  | 2014-05-16 | 2014-05-16 | 1d | Lidija Lastavec | 8h |  | 400 | 400 |  |

| ID | WBS | Task | Type | Duration | Start | Finish | Predecessors | Baseline start | Baseline finish | Baseline duration | Resources | Work | Cost | Baseline cost |
| --- | --- | --- | --- | --- | --- | --- | --- | --- | --- | --- | --- | --- | --- | --- |
| 35 | 5 | **V. faza – Razvoj registra EU poreznih podataka** |  | 15d | 2014-05-19 | 2014-06-06 | 21 | 2014-05-19 | 2014-06-06 | 15d |  | 240h | 12,000 | 12,000 |
| 36 | 5.1 | Use case _faza V | manual | 2d | 2014-05-19 | 2014-05-20 |  | 2014-05-20 | 2014-05-20 | 1d | Lidija Lastavec | 16h | 800 | 400 |
| 37 | 5.2 | Implementacija šifarnika za fazu V | manual | 2d | 2014-05-19 | 2014-05-20 |  | 2014-05-19 | 2014-05-20 | 2d | Nikola Maras | 16h | 800 | 800 |
| 38 | 5.3 | Implementacija registra EU VIES podataka za stjecanja | manual | 3d | 2014-05-21 | 2014-05-23 | 37 | 2014-05-21 | 2014-05-23 | 3d | Nikola Maras | 24h | 1,200 | 1,200 |
| 39 | 5.4 | Implementacija registra EU VIES podataka za isporuke | manual | 3d | 2014-05-26 | 2014-05-28 | 38 | 2014-05-26 | 2014-05-28 | 3d | Nikola Maras | 24h | 1,200 | 1,200 |
| 40 | 5.5 | Testiranje testnim podacima | manual | 3d | 2014-05-21 | 2014-05-23 |  | 2014-05-21 | 2014-05-23 | 3d | Lidija Lastavec | 24h | 1,200 | 1,200 |
| 41 | 5.6 | Zapisnik o testiranju registara | manual | 1d | 2014-05-26 | 2014-05-26 | 40 | 2014-05-26 | 2014-05-26 | 1d | Lidija Lastavec | 8h | 400 | 400 |
| 42 | 5.7 | Inicijalno punjenje svih registara | manual | 1d | 2014-05-29 | 2014-05-29 | 39 | 2014-05-29 | 2014-05-29 | 1d | Nikola Maras | 8h | 400 | 400 |
| 43 | 5.8 | Implementacija funkcionalnosti obrade poreznih podataka – uparivanje RH i EU podataka | manual | 3d | 2014-05-30 | 2014-06-03 | 42 | 2014-05-30 | 2014-06-03 | 3d | Nikola Maras | 24h | 1,200 | 1,200 |
| 44 | 5.9 | Implementacija funkcionalnosti kontrole RH poreznih podataka | manual | 3d | 2014-06-04 | 2014-06-06 | 43 | 2014-06-04 | 2014-06-06 | 3d | Nikola Maras | 24h | 1,200 | 1,200 |
| 45 | 5.10 | Implementacija funkcionalnosti pregleda rezultata kontrola i izvještaj prema poreznim ispostavama RH | manual | 6d | 2014-05-27 | 2014-06-03 |  | 2014-05-27 | 2014-06-03 | 6d | Lidija Lastavec | 48h | 2,400 | 2,400 |
| 46 | 5.11 | Testiranje testnim podacima | manual | 2d | 2014-06-04 | 2014-06-05 | 45 | 2014-06-04 | 2014-06-05 | 2d | Lidija Lastavec | 16h | 800 | 800 |
| 47 | 5.12 | Zapisnik o testiranju registara | manual | 1d | 2014-06-06 | 2014-06-06 | 46 | 2014-06-06 | 2014-06-06 | 1d | Lidija Lastavec | 8h | 400 | 400 |
| 48 | 6 | **VI. faza – Završno testiranje i izrada završne dokumentacije** |  | 5d | 2014-06-09 | 2014-06-13 | 35 | 2014-06-09 | 2014-06-13 | 5d |  | 80h | 4,000 | 4,000 |
| 49 | 6.1 | Testiranje cijelog sustava | manual | 3d | 2014-06-09 | 2014-06-11 |  | 2014-06-09 | 2014-06-11 | 3d | Lidija Lastavec | 24h | 1,200 | 1,200 |
| 50 | 6.2 | Izrada uputa za korisnike | manual | 5d | 2014-06-09 | 2014-06-13 |  | 2014-06-09 | 2014-06-13 | 5d | Nikola Maras | 40h | 2,000 | 2,000 |
| 51 | 6.3 | Zapisnik o primopredaji sustava | manual | 2d | 2014-06-12 | 2014-06-13 |  | 2014-06-12 | 2014-06-13 | 2d | Lidija Lastavec | 16h | 800 | 800 |
